# X

Schedule from ProjectLibre, 2024-09-09 to 2024-12-18.

## Calendars

- Padrão: Mon-Fri 08:00-12:00, 13:00-17:00; Sat-Sun off.

## Resources

| Resource |
| --- |
| Não atribuído |

## Schedule

| ID | WBS | Task | Duration | Start | Finish | Predecessors | Complete | Baseline start | Baseline finish |
| --- | --- | --- | --- | --- | --- | --- | --- | --- | --- |
| 1 | 1 | **ProjetoIZZY** | 72.65d? | 2024-09-09 08:00 | 2024-12-18 14:12 |  | 62% | 2024-09-09 08:00 | 2024-11-22 15:12 |
| 2 | 1.1 | **Prospecção** | 1.25d? | 2024-09-09 08:00 | 2024-09-10 10:00 |  | 100% | 2024-09-09 08:00 | 2024-09-10 10:00 |
| 3 | 1.1.1 | **PTEC** | 1.25d? | 2024-09-09 08:00 | 2024-09-10 10:00 |  | 100% | 2024-09-09 08:00 | 2024-09-10 10:00 |
| 4 | 1.1.1.1 | Estudar o domínio de aplicaçao do sistema | 1.25d | 2024-09-09 08:00 | 2024-09-10 10:00 |  | 100% | 2024-09-09 08:00 | 2024-09-10 10:00 |
| 5 | 1.1.1.2 | Redigir PTE | 1.25d? | 2024-09-09 08:00 | 2024-09-10 10:00 | 4 | 100% | 2024-09-09 08:00 | 2024-09-10 10:00 |
| 6 | 1.1.1.3 | Revisar PTE | 0.25d? | 2024-09-09 08:00 | 2024-09-09 10:00 | 5 | 100% | 2024-09-09 08:00 | 2024-09-09 10:00 |
| 7 | 1.1.2 | **Est. Prel. Tam** | 1d? | 2024-09-09 08:00 | 2024-09-09 17:00 |  | 100% | 2024-09-09 08:00 | 2024-09-09 17:00 |
| 8 | 1.1.2.1 | Estimar Tamanho do Projeto | 1d? | 2024-09-09 08:00 | 2024-09-09 17:00 | 4 | 100% | 2024-09-09 08:00 | 2024-09-09 17:00 |
| 9 | 1.1.2.2 | Revisar Estimar Tamanho do Projeto | 0.25d? | 2024-09-09 08:00 | 2024-09-09 10:00 | 8 | 100% | 2024-09-09 08:00 | 2024-09-09 10:00 |
| 10 | 1.2 | **Análise** | 12.12d? | 2024-09-10 10:00 | 2024-09-26 11:00 |  | 100% | 2024-09-10 10:00 | 2024-09-26 11:00 |
| 11 | 1.2.1 | **DRE** | 6d | 2024-09-10 10:00 | 2024-09-18 10:00 |  | 100% | 2024-09-10 10:00 | 2024-09-18 10:00 |
| 12 | 1.2.1.1 | Levantar Requisitos do Sistema | 2.5d | 2024-09-10 10:00 | 2024-09-12 15:00 | 6 | 100% | 2024-09-10 10:00 | 2024-09-12 15:00 |
| 13 | 1.2.1.2 | Redigir DRE | 2.75d | 2024-09-12 15:00 | 2024-09-17 13:00 | 12 | 100% | 2024-09-12 15:00 | 2024-09-17 13:00 |
| 14 | 1.2.1.3 | Revisar DRE | 0.75d | 2024-09-17 12:00 | 2024-09-18 10:00 | 13 | 100% | 2024-09-17 12:00 | 2024-09-18 10:00 |
| 15 | 1.2.2 | **MRB** | 6.12d? | 2024-09-18 10:00 | 2024-09-26 11:00 |  | 100% | 2024-09-18 10:00 | 2024-09-26 11:00 |
| 16 | 1.2.2.1 | Elaborar MRB | 5.62d? | 2024-09-18 10:00 | 2024-09-25 16:00 | 14 | 100% | 2024-09-18 10:00 | 2024-09-25 16:00 |
| 17 | 1.2.2.2 | Revisar MRB | 0.5d? | 2024-09-25 16:00 | 2024-09-26 11:00 | 16 | 100% | 2024-09-25 16:00 | 2024-09-26 11:00 |
| 18 | 1.3 | **Planejamento** | 21.62d? | 2024-09-18 10:00 | 2024-10-17 16:00 |  | 100% | 2024-09-18 10:00 | 2024-09-26 14:00 |
| 19 | 1.3.1 | Desenvolver Plano de Projeto | 0.25d? | 2024-09-18 10:00 | 2024-09-18 13:00 | 14 | 100% | 2024-09-18 10:00 | 2024-09-18 13:00 |
| 20 | 1.3.2 | Elaborar Estimativa de Tamanho/Esforço | 0.25d? | 2024-09-18 10:00 | 2024-09-18 13:00 | 14 | 100% | 2024-09-18 10:00 | 2024-09-18 13:00 |
| 21 | 1.3.3 | Revisar Est. de Tamanho/Esforço | 0.12d? | 2024-09-18 12:00 | 2024-09-18 14:00 | 20 | 100% | 2024-09-18 12:00 | 2024-09-18 14:00 |
| 22 | 1.3.4 | Elaborar Cronograma | 1d? | 2024-09-18 12:00 | 2024-09-19 13:00 | 19 | 100% | 2024-09-18 12:00 | 2024-09-19 13:00 |
| 23 | 1.3.5 | Revisar Cronograma | 0.12d? | 2024-09-19 12:00 | 2024-09-19 14:00 | 22 | 100% | 2024-09-19 12:00 | 2024-09-19 14:00 |
| 24 | 1.3.6 | Elaborar Protótipo | 12.75d? | 2024-09-18 10:00 | 2024-10-04 17:00 | 14 | 100% | 2024-09-18 10:00 | 2024-09-26 13:00 |
| 25 | 1.3.7 | Revisar Protótipo | 13.88d? | 2024-09-30 08:00 | 2024-10-17 16:00 | 24 | 100% | 2024-09-26 13:00 | 2024-09-26 14:00 |

| ID | WBS | Task | Duration | Start | Finish | Predecessors | Complete | Baseline start | Baseline finish | Constraint |
| --- | --- | --- | --- | --- | --- | --- | --- | --- | --- | --- |
| 26 | 1.4 | **Desenvolvimento** | 35.77d? | 2024-10-17 16:00 | 2024-12-06 14:12 |  | 38% | 2024-09-26 14:00 | 2024-11-12 15:12 |  |
| 27 | 1.4.1 | **Sprint 1** | 18.23d? | 2024-10-17 16:00 | 2024-11-13 08:48 |  | 100% | 2024-09-26 14:00 | 2024-10-17 09:48 |  |
| 28 | 1.4.1.1 | **Implementação** | 17.12d? | 2024-10-17 16:00 | 2024-11-12 08:00 |  | 100% | 2024-09-26 14:00 | 2024-10-16 09:00 |  |
| 29 | 1.4.1.1.1 | Manter Usuários | 16.12d? | 2024-10-17 16:00 | 2024-11-08 17:00 | 25 | 100% | 2024-09-26 14:00 | 2024-10-03 14:00 |  |
| 30 | 1.4.1.1.2 | Realizar Testes | 0d | 2024-11-11 08:00 | 2024-11-11 08:00 | 29 | 100% | 2024-10-03 14:00 | 2024-10-04 14:00 |  |
| 31 | 1.4.1.1.3 | Manter IZZY's | 1d? | 2024-11-11 08:00 | 2024-11-11 17:00 | 30 | 100% | 2024-10-04 14:00 | 2024-10-14 16:00 |  |
| 32 | 1.4.1.1.4 | Realizar Testes | 0d? | 2024-11-12 08:00 | 2024-11-12 08:00 | 31 | 100% | 2024-10-14 16:00 | 2024-10-16 09:00 | start no earlier than 2024-11-11 08:00 |
| 33 | 1.4.1.2 | **Monitoramento e Controle** | 1d? | 2024-11-12 08:00 | 2024-11-12 17:00 |  | 100% | 2024-10-16 09:00 | 2024-10-17 09:00 |  |
| 34 | 1.4.1.2.1 | Atualizar Cronograma | 1d? | 2024-11-12 08:00 | 2024-11-12 17:00 | 32 | 100% | 2024-10-16 09:00 | 2024-10-17 09:00 |  |
| 35 | 1.4.1.3 | **Gerência de Configuração** | 0.1d? | 2024-11-13 08:00 | 2024-11-13 08:48 |  | 100% | 2024-10-17 09:00 | 2024-10-17 09:48 |  |
| 36 | 1.4.1.3.1 | Gerar nova Tag de Configuração | 0.1d? | 2024-11-13 08:00 | 2024-11-13 08:48 | 34 | 100% | 2024-10-17 09:00 | 2024-10-17 09:48 |  |
| 37 | 1.4.2 | **Sprint 2** | 10.85d? | 2024-11-13 08:48 | 2024-11-27 16:36 |  |  | 2024-10-17 09:48 | 2024-11-04 08:36 |  |
| 38 | 1.4.2.1 | **Implementação** | 9.75d? | 2024-11-13 08:48 | 2024-11-26 15:48 |  |  | 2024-10-17 09:48 | 2024-10-30 16:48 |  |
| 39 | 1.4.2.1.1 | Manter Membros de um IZZY | 6.25d | 2024-11-13 08:48 | 2024-11-21 10:48 | 36 |  | 2024-10-17 09:48 | 2024-10-25 11:48 |  |
| 40 | 1.4.2.1.2 | Realizar Testes | 1.25d? | 2024-11-21 10:48 | 2024-11-22 13:48 | 39 |  | 2024-10-25 11:48 | 2024-10-28 14:48 |  |
| 41 | 1.4.2.1.3 | Manter Atividades | 8.12d? | 2024-11-13 08:48 | 2024-11-25 09:48 | 36 |  | 2024-10-17 09:48 | 2024-10-29 10:48 |  |
| 42 | 1.4.2.1.4 | Realizar Testes | 1.62d? | 2024-11-25 09:48 | 2024-11-26 15:48 | 41 |  | 2024-10-29 10:48 | 2024-10-30 16:48 |  |
| 43 | 1.4.2.2 | **Monitoramento de Controle** | 1d? | 2024-11-26 15:48 | 2024-11-27 15:48 |  |  | 2024-10-30 16:48 | 2024-11-01 16:48 |  |
| 44 | 1.4.2.2.1 | Atualizar Cronograma | 1d? | 2024-11-26 15:48 | 2024-11-27 15:48 | 42 |  | 2024-10-31 16:48 | 2024-11-01 16:48 |  |
| 45 | 1.4.2.3 | **Gerência de Configuração** | 0.1d | 2024-11-27 15:48 | 2024-11-27 16:36 |  |  | 2024-11-01 16:48 | 2024-11-04 08:36 |  |
| 46 | 1.4.2.3.1 | Gerar nova Tag de Configuração | 0.1d | 2024-11-27 15:48 | 2024-11-27 16:36 | 44 |  | 2024-11-01 16:48 | 2024-11-04 08:36 |  |
| 47 | 1.4.3 | **Sprint 3** | 3d? | 2024-11-27 16:36 | 2024-12-02 16:36 |  |  | 2024-11-04 08:36 | 2024-11-07 08:36 |  |
| 48 | 1.4.3.1 | **Implementação** | 3d? | 2024-11-27 16:36 | 2024-12-02 16:36 |  |  | 2024-11-04 08:36 | 2024-11-07 08:36 |  |
| 49 | 1.4.3.1.1 | Manter Fotos | 2.5d | 2024-11-27 16:36 | 2024-12-02 11:36 | 46 |  | 2024-11-04 08:36 | 2024-11-06 13:36 |  |
| 50 | 1.4.3.1.2 | Realizar Testes | 0.5d? | 2024-12-02 11:36 | 2024-12-02 16:36 | 49 |  | 2024-11-06 13:36 | 2024-11-07 08:36 |  |
| 51 | 1.4.3.1.3 | Relatório de Atividades | 1.25d? | 2024-11-27 16:36 | 2024-11-29 09:36 | 46 |  | 2024-11-04 08:36 | 2024-11-05 10:36 |  |
| 52 | 1.4.3.1.4 | Realizar Testes | 0.25d? | 2024-11-29 09:36 | 2024-11-29 11:36 | 51 |  | 2024-11-05 10:36 | 2024-11-05 13:36 |  |

| ID | WBS | Task | Duration | Start | Finish | Predecessors | Baseline start | Baseline finish | Constraint |
| --- | --- | --- | --- | --- | --- | --- | --- | --- | --- |
| 53 | 1.4.3.2 | **Monitoramento de Controle** | 1d? | 2024-11-29 11:36 | 2024-12-02 11:36 |  | 2024-11-05 13:36 | 2024-11-06 13:36 |  |
| 54 | 1.4.3.2.1 | Atualizar Cronograma | 1d? | 2024-11-29 11:36 | 2024-12-02 11:36 | 52 | 2024-11-05 13:36 | 2024-11-06 13:36 |  |
| 55 | 1.4.3.3 | **Gerência de Configuração** | 0.1d | 2024-12-02 11:36 | 2024-12-02 13:24 |  | 2024-11-06 13:36 | 2024-11-06 14:24 |  |
| 56 | 1.4.3.3.1 | Gerar nova Tag de Configuração | 0.1d | 2024-12-02 11:36 | 2024-12-02 13:24 | 54 | 2024-11-06 13:36 | 2024-11-06 14:24 |  |
| 57 | 1.4.4 | **Sprint 4** | 4.1d? | 2024-12-02 13:24 | 2024-12-06 14:12 |  | 2024-11-06 14:24 | 2024-11-12 15:12 |  |
| 58 | 1.4.4.1 | **Implementação** | 3d? | 2024-12-02 13:24 | 2024-12-05 13:24 |  | 2024-11-06 14:24 | 2024-11-11 14:24 |  |
| 59 | 1.4.4.1.1 | Relatório de Atividades Atrasadas | 1.88d | 2024-12-02 13:24 | 2024-12-04 11:24 | 56 | 2024-11-06 14:24 | 2024-11-08 13:24 |  |
| 60 | 1.4.4.1.2 | Realizar Testes | 0.38d | 2024-12-04 11:24 | 2024-12-04 15:24 | 59 | 2024-11-08 13:24 | 2024-11-08 16:24 |  |
| 61 | 1.4.4.1.3 | Relatório de Participação dos Membros | 2.5d? | 2024-12-02 13:24 | 2024-12-05 08:24 | 56 | 2024-11-06 14:24 | 2024-11-11 09:24 |  |
| 62 | 1.4.4.1.4 | Realizar Testes | 0.5d? | 2024-12-05 08:24 | 2024-12-05 13:24 | 61 | 2024-11-11 09:24 | 2024-11-11 14:24 |  |
| 63 | 1.4.4.2 | **Monitoramento de Controle** | 1d? | 2024-12-05 13:24 | 2024-12-06 13:24 |  | 2024-11-11 14:24 | 2024-11-12 14:24 |  |
| 64 | 1.4.4.2.1 | Atualizar Cronograma | 1d? | 2024-12-05 13:24 | 2024-12-06 13:24 | 62 | 2024-11-11 14:24 | 2024-11-12 14:24 |  |
| 65 | 1.4.4.3 | **Gerência de Configuração** | 0.1d | 2024-12-06 13:24 | 2024-12-06 14:12 |  | 2024-11-12 14:24 | 2024-11-12 15:12 |  |
| 66 | 1.4.4.3.1 | Gerar nova Tag de Configuração | 0.1d | 2024-12-06 13:24 | 2024-12-06 14:12 | 64 | 2024-11-12 14:24 | 2024-11-12 15:12 |  |
| 67 | 1.5 | **Fechamento** | 8d? | 2024-12-06 14:12 | 2024-12-18 14:12 |  | 2024-11-12 15:12 | 2024-11-22 15:12 |  |
| 68 | 1.5.1 | Apresentação do projeto ao cliente | 2d? | 2024-12-06 14:12 | 2024-12-10 14:12 | 66 | 2024-11-12 15:12 | 2024-11-14 15:12 |  |
| 69 | 1.5.2 | Entrega do projeto ao cliente | 2d? | 2024-12-10 14:12 | 2024-12-12 14:12 | 68 | 2024-11-14 15:12 | 2024-11-18 15:12 |  |
| 70 | 1.5.3 | Implantação do sistema | 4d? | 2024-12-12 14:12 | 2024-12-18 14:12 | 69 | 2024-11-18 15:12 | 2024-11-22 15:12 |  |
| 71 | 2 | Finalização | 0d? | 2024-12-18 14:12 | 2024-12-18 14:12 | 70 | 2024-11-22 15:12 | 2024-11-22 15:12 | start no earlier than 2024-09-09 08:00 |
